Schedule from a web Gantt chart, 2022-07-12 to 2025-10-14.
Saturdays and Sundays are off

## Schedule

| ID | WBS | Task | Duration | Start | Finish | Predecessors | Complete | Status |
| --- | --- | --- | --- | --- | --- | --- | --- | --- |
| 2 | 1 | **Tasks Dependent on Function Team** | 414d | 2022-07-12 | 2024-02-09 |  | 2% |  |
| 3 | 1.1 | (User&eBao BA) BSD Signoff | 1d | 2024-01-01 | 2024-01-01 |  |  |  |
| 4 | 1.2 | (eBao AA) Table Design of Customization | 30d | 2024-01-01 | 2024-02-09 |  | 3% |  |
| 5 | 1.3 | (eBao BA&AD) Code/Master Table Configuration | 1d | 2022-07-12 | 2022-07-12 |  |  |  |
| 6 | 1.4 | (User&eBao BA) Product Set-up | 1d | 2022-07-12 | 2022-07-12 |  |  |  |
| 7 | 1.5 | (User&eBao BA) Product Mappping | 1d | 2022-07-12 | 2022-07-12 |  |  |  |
| 8 | 1.6 | (eBao Tester) Function Test | 1d | 2022-07-12 | 2022-07-12 |  |  |  |
| 9 | 1.7 | (User) Function UAT | 1d | 2022-07-12 | 2022-07-12 |  |  |  |
| 10 | 2 | **Data Migration** | 292d | 2024-09-02 | 2025-10-14 |  | 2% |  |
| 11 | 2.1 | **DC Requirement Phase** | 20d | 2024-09-02 | 2024-09-27 |  | 51% |  |
| 12 | 2.1.1 | DC Approach/Scope/Plan | 5d | 2024-09-02 | 2024-09-06 |  | 3% |  |
| 13 | 2.1.2 | Baseline Template Introduction | 10d | 2024-09-09 | 2024-09-20 | 12 | 100% | waiting |
| 14 | 2.1.3 | DC Solution Doc | 4d | 2024-09-23 | 2024-09-26 | 13 |  | waiting |
| 15 | 2.1.4 | DC Approach and Scope Sign-Off | 1d | 2024-09-27 | 2024-09-27 | 14 |  | waiting |
| 16 | 2.2 | **DC Design Phase** | 40d | 2024-09-30 | 2024-11-22 |  |  | waiting |
| 17 | 2.2.1 | Design - Template & Mapping | 25d | 2024-09-30 | 2024-11-01 | 15, 4 |  | waiting |
| 18 | 2.2.2 | Design - Validation Rule & Reconciliation | 15d | 2024-11-04 | 2024-11-22 | 17 |  | waiting |
| 19 | 2.3 | **(Client IT & eBao DC) Staging Data Delivery and Validation** | 100d | 2024-09-23 | 2025-02-07 |  |  |  |
| 20 | 2.3.1 | First Time Delivery of All Staging Tables | 40d | 2024-09-23 | 2024-11-15 | 13 |  | waiting |
| 21 | 2.3.2 | Pass Rate of Staging Data > 60% | 20d | 2024-11-18 | 2024-12-13 | 20 |  | waiting |
| 22 | 2.3.3 | Pass Rate of Staging Data > 90% | 20d | 2024-12-16 | 2025-01-10 | 21 |  | waiting |
| 23 | 2.3.4 | Pass Rate of Staging Data = 100% | 20d | 2025-01-13 | 2025-02-07 | 22 |  | waiting |
| 24 | 2.4 | **DC Development Phase** | 65d | 2024-11-25 | 2025-02-21 |  |  |  |
| 25 | 2.4.1 | DC Development - Coversion Script | 30d | 2024-11-25 | 2025-01-03 | 18 |  | waiting |
| 26 | 2.4.2 | DC Development - Validation Rules | 10d | 2025-01-06 | 2025-01-17 | 25 |  | waiting |
| 27 | 2.4.3 | DC Development - Reconciliation | 10d | 2025-01-20 | 2025-01-31 | 26 |  | waiting |
| 28 | 2.4.4 | DC Development - Trial Run with Real Data | 35d | 2025-01-06 | 2025-02-21 | 25 |  | waiting |

| ID | WBS | Task | Duration | Start | Finish | Predecessors | Status |
| --- | --- | --- | --- | --- | --- | --- | --- |
| 29 | 2.5 | **DC Test - Internal** | 90d | 2025-01-20 | 2025-05-23 |  |  |
| 30 | 2.5.1 | Target Data Validation | 30d | 2025-01-20 | 2025-02-28 | 26 | waiting |
| 31 | 2.5.2 | Target Data Reconciliation | 30d | 2025-03-03 | 2025-04-11 | 30 | waiting |
| 32 | 2.5.3 | Recalculation Verification | 40d | 2025-01-20 | 2025-03-14 | 26 | waiting |
| 33 | 2.5.4 | Batch Jobs Running on Migrated Data | 20d | 2025-03-17 | 2025-04-11 | 32 | waiting |
| 34 | 2.5.5 | **Functional Test with Migrated Data** | 60d | 2025-03-03 | 2025-05-23 |  |  |
| 35 | 2.5.5.1 | Functional Test with Migrated Data (Pass Rate > 70%) | 30d | 2025-03-03 | 2025-04-11 | 30 | waiting |
| 36 | 2.5.5.2 | Functional Test with Migrated Data (Pass Rate > 85%) | 15d | 2025-04-14 | 2025-05-02 | 35 | waiting |
| 37 | 2.5.5.3 | Functional Test with Migrated Data (Pass Rate > 95%) | 15d | 2025-05-05 | 2025-05-23 | 36 | waiting |
| 38 | 2.6 | **DC Test - External (by Client)** | 90d | 2025-04-14 | 2025-08-15 |  |  |
| 39 | 2.6.1 | (Client BA) Comparison Check on UI | 30d | 2025-04-14 | 2025-05-23 | 35 | waiting |
| 40 | 2.6.2 | (Client BA/IT) Pre DC UAT | 30d | 2025-04-14 | 2025-05-23 | 35 | waiting |
| 41 | 2.6.3 | (Client User) DC UAT | 60d | 2025-05-26 | 2025-08-15 | 37, 40 | waiting |
| 42 | 2.7 | **Go Live** | 14d | 2025-08-14 | 2025-09-02 |  |  |
| 43 | 2.7.1 | Rehearsal for CutOver | 12d | 2025-08-14 | 2025-08-29 | 41FS-2d | suspended |
| 44 | 2.7.2 | CutOver | 2d | 2025-09-01 | 2025-09-02 | 43 | suspended |
| 45 | 2.8 | Post-Go-Live Support | 30d | 2025-09-03 | 2025-10-14 | 44 | suspended |
